# Database project plan revised

Schedule from MS Project, 2023-12-21 to 2024-07-09, A marks actual dates.
Hanon Systems Inc

## Calendars

- Standard: Mon-Fri 08:00-12:00, 13:00-17:00; Sat-Sun off.

## Schedule

| ID | WBS | Task | Type | Duration | Start | Finish | Predecessors | Complete | Remaining | Total slack | Free slack | Constraint | Text1 |
| --- | --- | --- | --- | --- | --- | --- | --- | --- | --- | --- | --- | --- | --- |
| 1 | 1 | **Database project** |  | 144d | 2023-12-21 A | 2024-07-09 |  | 71% | 42.26d | 0d |  |  |  |
| 2 | 1.1 | Project introduction to incoming student | manual | 1d | 2023-12-21 A | 2023-12-21 A |  | 100% |  |  |  |  |  |
| 3 | 1.2 | Explanation of goal and things acchieved | manual | 2d | 2024-01-02 A | 2024-01-03 A |  | 100% |  |  |  |  |  |
| 4 | 1.3 | Read documentation | manual | 1d | 2024-01-02 A | 2024-01-02 A |  | 100% |  |  |  |  |  |
| 5 | 1.4 | Set up web app files | manual | 1d | 2024-01-04 A | 2024-01-04 A | 3 | 100% |  |  |  |  |  |
| 6 | 1.5 | Set up connection to database and GitHub | manual | 1d | 2024-01-04 A | 2024-01-04 A | 3 | 100% |  |  |  |  |  |
| 8 | 1.6 | **Code Web Pages** |  | 11d | 2024-01-15 A | 2024-01-29 A |  | 100% |  |  |  |  |  |
| 9 | 1.6.1 | Web page type 1 | manual | 10d | 2024-01-15 A | 2024-01-26 A |  | 100% |  |  |  |  |  |
| 10 | 1.6.2 | Type 1 demo to team | manual | 1d | 2024-01-29 A | 2024-01-29 A | 9 | 100% |  |  |  |  |  |
| 12 | 1.7 | Program page |  | 2d | 2024-01-30 A | 2024-01-31 A | 10 | 100% |  |  |  |  |  |
| 13 | 1.8 | Product page |  | 2d | 2024-02-01 A | 2024-02-02 A | 12 | 100% |  |  |  |  |  |
| 15 | 1.9 | Tests page | manual | 24d | 2024-02-03 A | 2024-03-06 | 13 | 95% | 1.2d |  |  |  | Copying comments from chamber logs |
| 16 | 1.10 | Tests page demo |  | 1d | 2024-03-07 A | 2024-03-07 | 15 | 95% | 0.05d | 88d |  |  |  |
| 18 | 1.11 | Chamber Log page |  | 19d | 2024-02-05 A | 2024-03-12 | 13 | 90% | 1.9d | 0.9d | 0d | finish no earlier than 2024-03-12 | Edit general information |
| 19 | 1.12 | Chamber Log page demo |  | 2d | 2024-03-11 A | 2024-03-14 | 18 | 90% | 0.2d | 83.9d |  | finish no earlier than 2024-03-13 |  |
| 20 | 1.13 | Equipment/ program hour calculation |  | 14d | 2024-02-27 A | 2024-03-15 A |  | 100% |  |  |  | finish no earlier than 2024-03-15 |  |
| 22 | 1.14 | DUT history page |  | 10d | 2024-03-13 A | 2024-03-26 A | 18 | 100% |  |  |  |  |  |
| 23 | 1.15 | DUT history page demo |  | 1d | 2024-03-20 A | 2024-03-27 A | 22 | 100% |  |  |  |  |  |
| 25 | 1.16 | Program Information page |  | 5d | 2024-03-11 A | 2024-03-15 A | 19SS | 100% |  |  |  |  |  |
| 26 | 1.17 | Program Information page demo |  | 1d | 2024-03-18 A | 2024-03-18 A | 25 | 100% |  |  |  |  |  |
| 28 | 1.18 | Testmap page |  | 7d | 2024-03-18 A | 2024-03-26 A | 25 | 100% |  |  |  |  |  |
| 29 | 1.19 | Lab page |  | 7d | 2024-03-18 A | 2024-03-26 A | 25 | 100% |  |  |  |  |  |
| 30 | 1.20 | Skill page |  | 7d | 2024-03-18 A | 2024-03-26 A | 25 | 100% |  |  |  |  |  |
| 31 | 1.21 | Technician page |  | 7d | 2024-03-18 A | 2024-03-26 A | 25 | 100% |  |  |  |  |  |
| 32 | 1.22 | Fluid page |  | 7d | 2024-03-18 A | 2024-03-26 A | 25 | 100% |  |  |  |  |  |
| 33 | 1.23 | DUT page |  | 7d | 2024-03-18 | 2024-03-26 | 25 |  |  | 75d |  |  |  |
| 34 | 1.24 | Harness page |  | 7d | 2024-03-18 A | 2024-03-26 A | 25 | 100% |  |  |  |  |  |
| 35 | 1.25 | DAR page |  | 7d | 2024-03-18 A | 2024-03-26 A | 25 | 100% |  |  |  |  |  |
| 36 | 1.26 | Chamber page |  | 7d | 2024-03-18 A | 2024-03-26 A | 25 | 100% |  |  |  |  |  |
| 37 | 1.27 | Cage page |  | 7d | 2024-03-18 A | 2024-03-26 A | 25 | 100% |  |  |  |  |  |
| 38 | 1.28 | Laptop page |  | 7d | 2024-03-18 A | 2024-03-26 A | 25 | 100% |  |  |  |  |  |
| 39 | 1.29 | Test type page |  | 7d | 2024-03-18 A | 2024-03-26 A | 25 | 100% |  |  |  |  |  |
| 40 | 1.30 | Program fluid page |  | 7d | 2024-03-18 A | 2024-03-26 A | 25 | 100% |  |  |  |  |  |
| 41 | 1.31 | Program DAR page |  | 7d | 2024-03-18 A | 2024-03-26 A | 25 | 100% |  |  |  |  |  |
| 42 | 1.32 | Program cage page |  | 7d | 2024-03-18 A | 2024-03-26 A | 25 | 100% |  |  |  |  |  |
| 43 | 1.33 | DAR laptop page |  | 7d | 2024-03-18 A | 2024-03-26 A | 25 | 100% |  |  |  |  |  |
| 44 | 1.34 | Test chamber page |  | 7d | 2024-03-18 A | 2024-03-26 A | 25 | 100% |  |  |  |  |  |
| 45 | 1.35 | Test-DUT page |  | 7d | 2024-03-18 A | 2024-03-26 A | 25 | 100% |  |  |  |  |  |
| 46 | 1.36 | Test-Harnesses page |  | 7d | 2024-03-18 A | 2024-03-26 A | 25 | 100% |  |  |  |  |  |
| 48 | 1.37 | Create Menu |  | 2d | 2024-03-27 | 2024-03-28 |  |  |  | 0d |  | start no earlier than 2024-03-27 |  |
| 49 | 1.38 | Add Login |  | 5d | 2024-03-29 | 2024-04-04 | 48 |  |  | 0d |  |  |  |
| 50 | 1.39 | Add User Types |  | 5d | 2024-04-05 | 2024-04-11 | 49 |  |  | 0d |  |  |  |
| 51 | 1.40 | Create database |  | 3d | 2024-04-12 | 2024-04-16 | 50 |  |  | 0d |  |  |  |
| 52 | 1.41 | Test Run (programmers) |  | 5d | 2024-04-17 | 2024-04-23 | 51 |  |  | 0d |  |  |  |
| 53 | 1.42 | Meet with IT to deploy App | manual | 1d | 2024-03-11 A | 2024-03-11 |  | 50% | 0.5d |  |  |  |  |
| 54 | 1.43 | Deploy Web App |  | 5d | 2024-04-24 | 2024-04-30 | 52 |  |  | 0d |  |  |  |
| 55 | 1.44 | Deploy Azure Database |  | 5d | 2024-04-24 | 2024-04-30 | 52 |  |  | 50d |  |  |  |
| 56 | 1.45 | Test Run (all key users) |  | 10d | 2024-05-01 | 2024-05-14 | 54 |  |  | 0d |  |  |  |
| 58 | 1.46 | Data migration |  | 15d | 2024-05-15 | 2024-06-04 | 56 |  |  | 0d |  |  |  |
| 59 | 1.47 | Historical Data migration | manual | 1d? | 2023-12-21 | 2023-12-21 |  |  |  |  |  |  |  |
| 60 | 1.48 | Training |  | 5d | 2024-06-05 | 2024-06-11 | 58 |  |  | 0d |  |  |  |
| 62 | 1.49 | Trial Period |  | 20d | 2024-06-12 | 2024-07-09 | 60 |  |  | 0d |  |  |  |
